# Stalker In The Middle

How a schedule from MS Project changed from version to version. A marks actual dates.

## Version 1 (saved 2013-06-02)

Note of the change: Ajout du dossier planning avec le planning à jour

| ID | WBS | Task | Duration | Start | Finish | Predecessors | Complete | Total float | Constraint |
| --- | --- | --- | --- | --- | --- | --- | --- | --- | --- |
| 1 |  | Stalker In The Middle | 1d | 2013-07-04 | 2013-07-05 |  |  | -10d | finish no earlier than 2013-07-05 |
| 2 | 2 | **Documents avant-projet** | 27d? | 2013-03-07 | 2013-04-15 |  |  | 59.62d |  |
| 3 | 2.1 | **Rédaction des documents avant-projet** | 1d? | 2013-03-07 | 2013-03-08 |  |  | 85.62d |  |
| 4 |  | Charte de projet | 0.33d? | 2013-03-07 | 2013-03-08 |  | 100% | 85.62d |  |
| 5 |  | Spécifications | 0.5d? | 2013-03-07 | 2013-03-08 |  | 100% | 85.62d |  |
| 6 |  | Étude d'opportunité et de faisabilité | 1d? | 2013-03-07 | 2013-03-08 |  | 100% | 85.62d |  |
| 7 |  | Planning du projet | 1d? | 2013-03-07 | 2013-03-08 |  | 100% | 85.62d |  |
| 8 |  | Prise de rendez-vous pour validation des docs | 1d | 2013-04-04 | 2013-04-05 | 3SF | 100% | 65d | finish no earlier than 2013-04-05 |
| 9 |  | Réunion de validation | 1.25d | 2013-04-11 | 2013-04-12 | 8SF |  | 48.06d | start no earlier than 2013-04-11 |
| 10 |  | Lancement du projet | 1d | 2013-04-12 | 2013-04-15 | 9SF | 100% | 46.06d | start no earlier than 2013-04-12 |
| 11 | 3 | **Projet** | 48.62d? | 2013-04-15 A | 2013-06-20 | 10 | 74% | 11d |  |
| 12 | 3.1 | **Itération 1** | 11.62d | 2013-04-15 A | 2013-04-30 |  | 95% |  |  |
| 13 | 3.1.1 | **Pouvoir scanner l'intégralité du réseau** | 6d? | 2013-04-15 A | 2013-04-23 A |  | 100% |  |  |
| 14 | 3.1.1.1 | **Calcul de la plage d'adresse du réseau local** | 2d? | 2013-04-15 A | 2013-04-17 A |  | 100% |  |  |
| 15 |  | Détermination de l'adresse du réseau | 1d? | 2013-04-15 A | 2013-04-16 A |  | 100% |  |  |
| 16 |  | Détermination de l'adresse de broadcast | 1d? | 2013-04-16 A | 2013-04-17 A | 15 | 100% |  |  |
| 17 | 3.1.1.2 | **Envoi de nombreux paquets ARP et ICMP à toutes les adresses IP** | 3d? | 2013-04-18 A | 2013-04-23 A | 14FS+1d | 100% |  |  |
| 18 |  | Obtenir la liste des adresses IP à scanner | 1d? | 2013-04-18 A | 2013-04-19 A |  | 100% |  |  |
| 19 |  | Envoi d'un paquet ICMP (ping) à l'ordinateur à scanner | 1d? | 2013-04-19 A | 2013-04-22 A | 18 | 100% |  |  |
| 20 |  | Envoi d'un paquet ARP à l'ordinateur scanné | 1d? | 2013-04-22 A | 2013-04-23 A | 19 | 100% |  |  |
| 21 | 3.1.2 | **Pouvoir modifier la table ARP à distance** | 2d | 2013-04-23 A | 2013-04-25 A | 13 | 100% |  |  |
| 22 |  | Envoi de paquet de réponse ARP indiquant que l'adresse du routeur dispose de l'adresse MAC de l'ordinateur interceptant les paquets | 1d | 2013-04-23 A | 2013-04-24 A |  | 100% |  | finish no earlier than 2013-04-22 |
| 23 |  | Vérifier la réception de paquets provenant de l'ordinateur victime | 1d | 2013-04-24 A | 2013-04-25 A | 22 | 100% |  | finish no earlier than 2013-04-22 |
| 24 | 3.1.3 | **Recevoir les réponses en écoutant les paquets et découvrir les adresses MAC du réseau** | 2d? | 2013-04-24 A | 2013-04-26 A | 17FS+1d | 100% |  |  |
| 25 |  | Écouter à l'aide de LibPcap | 1d? | 2013-04-24 A | 2013-04-25 A |  | 100% |  |  |
| 26 |  | Obtenir l'adresse MAC à partir des paquets ICMP ou ARP précédemment envoyés | 1d? | 2013-04-25 A | 2013-04-26 A | 25 | 100% |  |  |
| 27 | 3.1.4 | **Pouvoir intercepter et rerouter les paquets** | 1d | 2013-04-26 A | 2013-04-29 A | 21 | 100% |  |  |
| 28 | 3.1.4.1 | **Pouvoir lire et interpréter les paquets à l'aide de la librairie libpcap** | 1d | 2013-04-26 A | 2013-04-29 A |  | 100% |  |  |
| 29 |  | Modifier ou retransmettre les paquets à l'aide du FORWARDING | 1d | 2013-04-26 A | 2013-04-29 A |  | 100% |  | finish no earlier than 2013-04-29 |
| 30 | 3.1.5 | **Fonctionnalités de défense** | 5d | 2013-04-23 A | 2013-04-30 |  | 100% |  |  |
| 31 | 3.1.5.1 | **Détection des modifications de la table ARP** | 4d? | 2013-04-23 A | 2013-04-29 A |  | 100% |  |  |
| 32 |  | Déterminer l'adresse MAC du routeur | 1d? | 2013-04-23 A | 2013-04-24 A |  | 100% |  | finish no earlier than 2013-04-24 |
| 33 |  | Lire la table ARP toutes les secondes et détecter les modifications | 1d? | 2013-04-26 A | 2013-04-29 A |  | 100% |  | finish no earlier than 2013-04-29 |
| 34 |  | Avertir l'utilisateur d'une éventuelle anomalie | 1d? | 2013-04-26 A | 2013-04-29 A |  | 100% |  | finish no earlier than 2013-04-29 |
| 35 | 3.1.5.2 | **Changement de l'adresse MAC** | 1d? | 2013-04-30 A | 2013-05-01 A |  | 100% |  |  |
| 36 |  | Générer une adresse MAC aléatoire et l'appliquer à l'adaptateur réseau | 1d? | 2013-04-30 A | 2013-05-01 A |  | 100% |  | start no earlier than 2013-04-30 |
| 37 | 3.1.6 | **Création d'une interface graphique** | 6.62d | 2013-04-22 A | 2013-04-30 |  | 86% |  |  |
| 38 |  | Lier le programme initial à l'interface graphique | 1.62d | 2013-04-29 A | 2013-04-30 |  | 90% |  |  |
| 39 |  | Utilisation de la libraire Curses pour créer l'interface en PERL | 2.62d | 2013-04-25 A | 2013-04-29 |  | 90% |  |  |
| 40 |  | Mise en place de threads nécessaires à l'envoi et à la réception simultanés de paquets | 2.62d | 2013-04-22 A | 2013-04-24 |  | 80% |  |  |
| 41 | 3.2 | **Itération 2** | 11.62d | 2013-04-30 A | 2013-05-15 |  | 99% | 37d |  |
| 42 | 3.2.1 | **Pouvoir obtenir les mots de passe transitant en clair** | 1.81d | 2013-05-06 A | 2013-05-08 |  | 96% | 42.19d |  |
| 43 |  | Étudier les différents protocoles et leurs systèmes d'authentification | 1.35d | 2013-05-06 A | 2013-05-08 A |  | 100% |  |  |
| 44 |  | Réussir à extraire les identifiants en fonction du protocole utilisé | 0.81d | 2013-05-07 A | 2013-05-08 | 43 | 90% | 42.19d |  |
| 45 | 3.2.2 | **Pouvoir modifier les réponses DNS** | 1d | 2013-05-14 A | 2013-05-15 A | 42 | 100% |  |  |
| 46 |  | Être capable d'interpréter les paquets DNS, les modifier, puis enfin les retransmettre | 1d | 2013-05-14 A | 2013-05-15 A |  | 100% |  | finish no earlier than 2013-05-15 |
| 47 | 3.2.2.1 | **Pouvoir intercepter et répondre à une requête DHCP** | 5.62d | 2013-04-30 A | 2013-05-07 A | 27 | 100% |  |  |
| 48 |  | Intercepter les paquets DHCP Discover en broadcast | 3.62d? | 2013-04-30 A | 2013-05-03 A |  | 100% |  | start no earlier than 2013-04-30 |
| 49 |  | Répondre au demandeur d'un bail DHCP | 1.62d? | 2013-05-06 A | 2013-05-07 A |  | 100% |  | start no earlier than 2013-05-06 |
| 50 | 3.2.2.2 | **Pouvoir intégrer les cookies de la victime automatiquement sur la machine attaquante** | 7.62d | 2013-05-03 A | 2013-05-14 |  | 100% |  |  |
| 51 |  | Étudier les solutions stables et acceptables afin d'intégrer les cookies sur un navigateur | 2.5d | 2013-05-10 A | 2013-05-14 A |  | 100% |  | finish no earlier than 2013-05-14 |
| 52 |  | Implanter la solution | 1d | 2013-05-14 A | 2013-05-15 A | 51 | 100% |  |  |
| 53 | 3.2.2.3 | **Itération 3** | 21.62d? | 2013-05-22 A | 2013-06-20 |  | 18% | 11d |  |
| 54 | 3.2.2.3.1 | **Affichage des pages web visitées** | 6.62d | 2013-05-22 A | 2013-05-30 | 50 | 54% | 18d |  |
| 55 |  | Intercepter et enregistrer les réponses HTTP | 2.62d | 2013-05-22 A | 2013-05-24 |  | 95% | 20d | finish no earlier than 2013-05-24 |
| 56 |  | Convertir la page web au format image | 1d | 2013-05-28 | 2013-05-29 | 55 |  | 18.62d | start no earlier than 2013-05-28 |
| 57 |  | Ouvrir les images finales | 1d | 2013-05-29 | 2013-05-30 | 56 |  | 18d | finish no earlier than 2013-05-30 |
| 58 | 3.2.2.3.2 | **Pouvoir intercepter les transmissions VoIP** | 2d? | 2013-05-30 | 2013-06-03 | 54 |  | 18d |  |
| 59 | 3.2.2.3.2.1 | **Être capable de détecter lorsqu'un appel VoIP débute** | 1d? | 2013-05-30 | 2013-05-31 | 56 |  | 18d |  |
| 60 |  | Utilisation du module RTP / SIP | 1d? | 2013-05-30 | 2013-05-31 |  |  | 18d |  |
| 61 | 3.2.2.3.2.2 | **Enregistrer les conversations vocales dans un format audio** | 1d? | 2013-05-31 | 2013-06-03 | 59 |  | 18d |  |
| 62 |  | Conversion du flux réseau en flux audio à l'aide de librairies PERL | 1d? | 2013-05-31 | 2013-06-03 |  |  | 18d |  |
| 63 | 3.2.2.3.3 | **Pouvoir générer de faux certificats automatiquement** | 3d? | 2013-06-12 | 2013-06-17 | 61 |  | 11d |  |
| 64 |  | Détecter les transactions HTTPS | 1d | 2013-06-12 | 2013-06-13 |  |  | 11d | finish no earlier than 2013-06-13 |
| 65 |  | Générer le faux certificat et l'envoyer à la victime | 1d | 2013-06-13 | 2013-06-14 | 64 |  | 11d | finish no earlier than 2013-06-13 |
| 66 |  | Écouter les paquets à l'aide du port 443 | 1d? | 2013-06-14 | 2013-06-17 | 65 |  | 14d |  |
| 67 | 3.2.2.4 | **Recette finale** | 2d | 2013-06-14 | 2013-06-18 | 65 |  | 11d |  |
| 68 |  | Réunion recette | 1d | 2013-06-14 | 2013-06-17 |  |  | 11d | start no earlier than 2013-06-14 |
| 69 |  | Retour sur le projet | 1d | 2013-06-17 | 2013-06-18 | 68 |  | 11d | finish no earlier than 2013-06-17 |
| 70 | 3.2.2.5 | **Préparation forum PI** | 2d | 2013-06-18 | 2013-06-20 | 67 |  | 11d |  |

| ID | Task | Duration | Start | Finish | Predecessors | Total float | Constraint |
| --- | --- | --- | --- | --- | --- | --- | --- |
| 71 | Préparation des slides | 1d | 2013-06-18 | 2013-06-19 |  | 11d | start no earlier than 2013-06-17 |
| 72 | Préparation des élements de décor | 1d | 2013-06-19 | 2013-06-20 | 71 | 11d | start no earlier than 2013-06-18 |

## Version 2 (saved 2013-06-05)

Note of the change: Planning à jour du 05/06/2013

Last finish stays 2013-07-05. Complete tasks 26 → 32.

Added:

| ID | Task | Duration | Start | Finish | Constraint | Resources |
| --- | --- | --- | --- | --- | --- | --- |
| 43 | Intégration d'un cracker | 3.62d? | 2013-06-05 A | 2013-06-10 | finish no earlier than 2013-06-10 | Christie |
| 52 | Récupération des cookies de la victime | 0.62d | 2013-06-04 A | 2013-06-04 A |  | Christie |

Changed:

| ID | Task | Start | Finish | Duration | Complete | Total float | Other |
| --- | --- | --- | --- | --- | --- | --- | --- |
| 11 | **Projet** |  |  |  | 74% → 79% |  |  |
| 12 | **Itération 1** |  |  |  | 95% → 99% |  |  |
| 37 | **Création d'une interface graphique** |  |  |  | 86% → 99% |  |  |
| 38 | Lier le programme initial à l'interface graphique |  |  |  | 90% → 95% |  |  |
| 39 | Utilisation de la libraire Curses pour créer l'interface en PERL |  | 2013-04-29 A |  | 90% → 100% |  |  |
| 40 | Mise en place de threads nécessaires à l'envoi et à la réception simultanés de paquets |  | 2013-04-24 A |  | 80% → 100% |  |  |
| 41 | **Itération 2** |  | 2013-05-15 → 2013-06-14 (+30d) | 11.62d → 33.62d | 99% → 86% | 37d → 15d |  |
| 42 | **Pouvoir obtenir les mots de passe transitant en clair** |  | 2013-05-08 → 2013-06-10 (+33d) | 1.81d → 25d | 96% → 61% | 42.19d → none |  |
| 51 | **Pouvoir intégrer les cookies de la victime automatiquement sur la machine attaquante** |  | 2013-05-14 → 2013-06-14 A (+31d) | 7.62d → 30.62d |  |  |  |
| 54 | Implanter la solution |  |  |  |  |  | resources Alban; Brice; Christie; Nicolas → Nicolas |
| 55 | **Itération 3** |  |  |  | 18% → 41% |  |  |
| 56 | **Affichage des pages web visitées** |  | 2013-05-30 → 2013-06-17 (+18d) | 6.62d → 18.62d | 54% → 77% | 18d → 14d |  |
| 57 | Intercepter et enregistrer les réponses HTTP et HTTPS |  |  |  | 95% → 97% | 20d → 30d | was named Intercepter et enregistrer les réponses HTTP |
| 58 | Convertir la page web au format image | 2013-05-28 A | 2013-05-29 A |  | 0% → 100% | 18.62d → none | resources Brice; Christie → Nicolas |
| 59 | Ouvrir les images finales | 2013-05-29 → 2013-06-14 (+16d) | 2013-05-30 → 2013-06-17 (+18d) |  |  | 18d → 14d |  |
| 60 | **Pouvoir intercepter les transmissions VoIP** | 2013-05-30 A | 2013-06-03 A |  | 0% → 100% | 18d → none | resources Alban; Brice; Christie; Nicolas → Nicolas |
| 61 | **Être capable de détecter lorsqu'un appel VoIP débute** | 2013-05-30 A | 2013-05-31 A |  | 0% → 100% | 18d → none |  |
| 62 | Utilisation du module RTP / SIP | 2013-05-30 A | 2013-05-31 A |  | 0% → 100% | 18d → none |  |
| 63 | **Enregistrer les conversations vocales dans un format audio** | 2013-05-31 A | 2013-06-03 A |  | 0% → 100% | 18d → none |  |
| 64 | Conversion du flux réseau en flux audio à l'aide de librairies PERL | 2013-05-31 A | 2013-06-03 A |  | 0% → 100% | 18d → none |  |
